# elaboration_project_plan

Schedule from MS Project, 2006-11-01 to 2007-02-28, A marks actual dates.
Duke University

## Calendars

- Standard: Mon-Fri 08:00-12:00, 13:00-17:00; Sat-Sun off.

## Resources

| Resource |
| --- |
| Patrick |
| Ram |
| Elaborators |
| PriyatamElaborators |
| Development team |
| Pri |
| Priyatam |
| Ramakrishna |
| Kruttik |
| Manav |
| Developers |
| Development teatm |

## Schedule

| ID | WBS | Task | Type | Duration | Start | Finish | Predecessors | Complete | Remaining | Total slack |
| --- | --- | --- | --- | --- | --- | --- | --- | --- | --- | --- |
| 1 | 1 | **Iteration 1** |  | 22d | 2006-11-01 A | 2006-11-30 |  | 91% | 1.91d | 0d |
| 2 | 1.1 | **Project Management** |  | 22d | 2006-11-01 A | 2006-11-30 A |  | 100% |  |  |
| 3 | 1.1.1 | **Draft project plan (task 1.1)** |  | 10d | 2006-11-01 A | 2006-11-14 A |  | 100% |  |  |
| 4 | 1.1.1.1 | Developer draft |  | 5d | 2006-11-01 A | 2006-11-07 A |  | 100% |  |  |
| 5 | 1.1.1.2 | Adopter review |  | 3d | 2006-11-08 A | 2006-11-10 A | 4 | 100% |  |  |
| 6 | 1.1.1.3 | Developer update |  | 2d | 2006-11-13 A | 2006-11-14 A | 5 | 100% |  |  |
| 7 | 1.1.1.4 | Deliver to BAH | milestone | 0d | 2006-11-14 A | 2006-11-14 A | 6 | 100% |  |  |
| 8 | 1.1.2 | **Draft communication plan (task 1.2)** |  | 22d | 2006-11-01 A | 2006-11-30 A |  | 100% |  |  |
| 9 | 1.1.2.1 | Developer draft |  | 12d | 2006-11-01 A | 2006-11-16 A |  | 100% |  |  |
| 10 | 1.1.2.2 | Adopter review |  | 5d | 2006-11-17 A | 2006-11-23 A | 9 | 100% |  |  |
| 11 | 1.1.2.3 | Developer update |  | 5d | 2006-11-24 A | 2006-11-30 A | 10 | 100% |  |  |
| 12 | 1.1.2.4 | Deliver to BAH | milestone | 0d | 2006-11-30 A | 2006-11-30 A | 11 | 100% |  |  |
| 13 | 1.1.3 | **Draft risk matrix (task 1.4.1)** |  | 12d | 2006-11-01 A | 2006-11-16 A |  | 100% |  |  |
| 14 | 1.1.3.1 | Developer draft |  | 12d | 2006-11-01 A | 2006-11-16 A |  | 100% |  |  |
| 15 | 1.1.3.2 | Deliver to BAH | milestone | 0d | 2006-11-16 A | 2006-11-16 A | 14 | 100% |  |  |
| 16 | 1.1.4 | **Update risk matrix (task 1.3.1)** |  | 10d | 2006-11-17 A | 2006-11-30 A |  | 100% |  |  |
| 17 | 1.1.4.1 | Developer draft |  | 10d | 2006-11-17 A | 2006-11-30 A | 13 | 100% |  |  |
| 18 | 1.1.4.2 | Deliver to BAH | milestone | 0d | 2006-11-30 A | 2006-11-30 A | 17 | 100% |  |  |
| 19 | 1.1.5 | **Monthly report (task 1.3.1)** |  | 22d | 2006-11-01 A | 2006-11-30 A |  | 100% |  |  |
| 20 | 1.1.5.1 | Developer draft |  | 22d | 2006-11-01 A | 2006-11-30 A |  | 100% |  |  |
| 21 | 1.1.5.2 | Deliver to BAH | milestone | 0d | 2006-11-30 A | 2006-11-30 A |  | 100% |  |  |
| 22 | 1.1.6 | **Test plan document (task 2.6.1)** |  | 22d | 2006-11-01 A | 2006-11-30 A |  | 100% |  |  |
| 23 | 1.1.6.1 | Developer draft |  | 12d | 2006-11-01 A | 2006-11-16 A |  | 100% |  |  |
| 24 | 1.1.6.2 | Adopter review |  | 5d | 2006-11-17 A | 2006-11-23 A | 23 | 100% |  |  |
| 25 | 1.1.6.3 | Developer update |  | 5d | 2006-11-24 A | 2006-11-30 A | 24 | 100% |  |  |
| 26 | 1.1.6.4 | Deliver to BAH | milestone | 0d | 2006-11-14 A | 2006-11-14 A | 25 | 100% |  |  |

| ID | WBS | Task | Type | Duration | Start | Finish | Predecessors | Complete | Remaining | Total slack |
| --- | --- | --- | --- | --- | --- | --- | --- | --- | --- | --- |
| 27 | 1.2 | **Requirements** |  | 22d | 2006-11-01 A | 2006-11-30 |  | 76% | 5.32d | 0d |
| 28 | 1.2.1 | **Draft meeting notes from face-to-face (task 1.5)** |  | 22d | 2006-11-01 A | 2006-11-30 A |  | 100% |  |  |
| 29 | 1.2.1.1 | Developer draft |  | 12d | 2006-11-01 A | 2006-11-16 A |  | 100% |  |  |
| 30 | 1.2.1.2 | Adopter review |  | 5d | 2006-11-17 A | 2006-11-23 A | 29 | 100% |  |  |
| 31 | 1.2.1.3 | Developer update |  | 5d | 2006-11-24 A | 2006-11-30 A | 30 | 100% |  |  |
| 32 | 1.2.1.4 | Deliver to BAH | milestone | 0d | 2006-11-14 A | 2006-11-14 A | 31 | 100% |  |  |
| 33 | 1.2.2 | **Refine vision and scope document (task 1.8)** |  | 22d | 2006-11-01 A | 2006-11-30 A |  | 100% |  |  |
| 34 | 1.2.2.1 | Developer draft | milestone | 12d | 2006-11-01 A | 2006-11-16 A |  | 100% |  |  |
| 35 | 1.2.2.2 | Adopter review | milestone | 5d | 2006-11-24 A | 2006-11-30 A | 34 | 100% |  |  |
| 36 | 1.2.2.3 | Developer update |  | 5d | 2006-11-01 A | 2006-11-07 A | 35 | 100% |  |  |
| 37 | 1.2.2.4 | Deliver to BAH | milestone | 0d | 2006-11-01 A | 2006-11-01 A | 36 | 100% |  |  |
| 38 | 1.2.3 | **Draft level 1 use cases and requirements** |  | 2d | 2006-11-01 A | 2006-11-02 A |  | 100% |  |  |
| 39 | 1.2.3.1 | Developer draft | milestone | 2d | 2006-11-01 A | 2006-11-02 A |  | 100% |  |  |
| 40 | 1.2.4 | **Draft use case document (task 2.1.1)** |  | 22d | 2006-11-01 A | 2006-11-30 A |  | 100% |  |  |
| 41 | 1.2.4.1 | Integrate level 1 use cases |  | 2d | 2006-11-01 A | 2006-11-02 A | 38 | 100% |  |  |
| 42 | 1.2.4.2 | Draft protocol management use cases |  | 11d | 2006-11-02 A | 2006-11-16 A |  | 100% |  |  |
| 43 | 1.2.4.3 | Adopter review |  | 5d | 2006-11-17 A | 2006-11-23 A | 42 | 100% |  |  |
| 44 | 1.2.4.4 | Developer update |  | 5d | 2006-11-24 A | 2006-11-30 A | 43 | 100% |  |  |
| 45 | 1.2.4.5 | Deliver to BAH | milestone | 0d | 2006-11-30 A | 2006-11-30 A | 44 | 100% |  |  |
| 46 | 1.2.5 | **SRS document (task 2.2.1)** |  | 22d | 2006-11-01 | 2006-11-30 |  |  |  | 0d |
| 47 | 1.2.5.1 | Developer draft | milestone | 12d | 2006-11-01 | 2006-11-16 |  |  |  | 0d |
| 48 | 1.2.5.2 | Adopter review | milestone | 5d | 2006-11-17 | 2006-11-23 | 47 |  |  | 0d |
| 49 | 1.2.5.3 | Developer update |  | 5d | 2006-11-24 | 2006-11-30 | 48 |  |  | 0d |
| 50 | 1.2.5.4 | Deliver to BAH | milestone | 0d | 2006-11-30 | 2006-11-30 | 49 |  |  | 0d |

| ID | WBS | Task | Type | Duration | Start | Finish | Predecessors | Complete | Remaining | Total slack |
| --- | --- | --- | --- | --- | --- | --- | --- | --- | --- | --- |
| 51 | 1.3 | **Analysis and Design** |  | 22d | 2006-11-01 A | 2006-11-30 |  | 79% | 4.57d | 0d |
| 52 | 1.3.1 | **Design document (task 2.4.1)** |  | 22d | 2006-11-01 | 2006-11-30 |  |  |  | 0d |
| 53 | 1.3.1.1 | Developer draft | milestone | 12d | 2006-11-01 | 2006-11-16 |  |  |  | 0d |
| 54 | 1.3.1.2 | Adopter review | milestone | 5d | 2006-11-17 | 2006-11-23 | 53 |  |  | 0d |
| 55 | 1.3.1.3 | Developer update |  | 5d | 2006-11-24 | 2006-11-30 | 54 |  |  | 0d |
| 56 | 1.3.1.4 | Deliver to BAH | milestone | 0d | 2006-11-30 | 2006-11-30 | 55 |  |  | 0d |
| 57 | 1.3.2 | **UML diagrams (task 2.3.1)** |  | 22d | 2006-11-01 A | 2006-11-30 A |  | 100% |  |  |
| 58 | 1.3.2.1 | Developer draft | milestone | 12d | 2006-11-01 A | 2006-11-16 A |  | 100% |  |  |
| 59 | 1.3.2.2 | Adopter review | milestone | 5d | 2006-11-17 A | 2006-11-23 A | 58 | 100% |  |  |
| 60 | 1.3.2.3 | Developer update |  | 5d | 2006-11-24 A | 2006-11-30 A | 59 | 100% |  |  |
| 61 | 1.3.2.4 | Deliver to BAH | milestone | 0d | 2006-11-30 A | 2006-11-30 A | 60 | 100% |  |  |
| 62 | 1.3.3 | **ESB** |  | 5d | 2006-11-01 A | 2006-11-07 A |  | 100% |  |  |
| 63 | 1.3.3.1 | Evalutate technologies by prototyping |  | 5d | 2006-11-01 A | 2006-11-07 A |  | 100% |  |  |
| 64 | 1.3.4 | **Grid service** |  | 7d | 2006-11-01 A | 2006-11-09 A |  | 100% |  |  |
| 65 | 1.3.4.1 | Evaluate caGrid 1.0 service infrastructure |  | 7d | 2006-11-01 A | 2006-11-09 A |  | 100% |  |  |
| 66 | 1.3.5 | **Database** |  | 7d | 2006-11-01 A | 2006-11-09 A |  | 100% |  |  |
| 67 | 1.3.5.1 | First draft of protocol database structure |  | 7d | 2006-11-01 A | 2006-11-09 A |  | 100% |  |  |
| 68 | 1.3.6 | **Domain model** |  | 22d | 2006-11-01 A | 2006-11-30 A |  | 100% |  |  |
| 69 | 1.3.6.1 | Create protocol model harmonized with BRIDG |  | 10d | 2006-11-01 A | 2006-11-14 A | 38 | 100% |  |  |
| 70 | 1.3.6.2 | Create first draft of protocol model |  | 11d | 2006-11-16 A | 2006-11-30 A | 69 | 100% |  |  |
| 71 | 1.3.7 | **Security** |  | 22d | 2006-11-01 A | 2006-11-30 A |  | 100% |  |  |
| 72 | 1.3.7.1 | Evaluate caGrid 1.0 security infrastructure |  | 22d | 2006-11-01 A | 2006-11-30 A |  | 100% |  |  |
| 73 | 1.4 | **Implementation** |  | 22d | 2006-11-01 A | 2006-11-30 A |  | 100% |  |  |
| 74 | 1.4.1 | **Web interface** |  | 22d | 2006-11-01 A | 2006-11-30 A |  | 100% |  |  |
| 75 | 1.4.1.1 | Migrate v1 code into codebase |  | 22d | 2006-11-01 A | 2006-11-30 A |  | 100% |  |  |

| ID | WBS | Task | Type | Duration | Start | Finish | Predecessors | Complete | Remaining | Total slack | Free slack | Resources | Work | Actual work |
| --- | --- | --- | --- | --- | --- | --- | --- | --- | --- | --- | --- | --- | --- | --- |
| 76 | 1.4.2 | **Enterprise Service Bus** |  | 22d | 2006-11-01 A | 2006-11-30 A |  | 100% |  |  |  |  |  |  |
| 77 | 1.4.2.1 | Setup initial project |  | 22d | 2006-11-01 A | 2006-11-30 A |  | 100% |  |  |  |  |  |  |
| 78 | 1.4.3 | **Grid service** |  | 15d | 2006-11-10 A | 2006-11-30 A |  | 100% |  |  |  |  |  |  |
| 79 | 1.4.3.1 | Create grid service skeleton |  | 15d | 2006-11-10 A | 2006-11-30 A | 65, 38 | 100% |  |  |  |  |  |  |
| 80 | 1.4.4 | **Database** |  | 22d | 2006-11-01 A | 2006-11-30 A |  | 100% |  |  |  |  |  |  |
| 81 | 1.4.4.1 | Migrate v1 code into codebase |  | 22d | 2006-11-01 A | 2006-11-30 A |  | 100% |  |  |  |  |  |  |
| 82 | 1.4.4.2 | Implement protocol database structure |  | 22d | 2006-11-01 A | 2006-11-30 A | 38 | 100% |  |  |  |  |  |  |
| 83 | 1.4.5 | **Domain model** |  | 22d | 2006-11-01 A | 2006-11-30 A |  | 100% |  |  |  |  |  |  |
| 84 | 1.4.5.1 | Migrate v1 code into codebase |  | 22d | 2006-11-01 A | 2006-11-30 A |  | 100% |  |  |  |  |  |  |
| 85 | 1.4.5.2 | Implement protocol model |  | 15d | 2006-11-01 A | 2006-11-21 A | 38 | 100% |  |  |  |  |  |  |
| 86 | 1.4.5.3 | Create OR mapping for protocol model |  | 7d | 2006-11-22 A | 2006-11-30 A | 85 | 100% |  |  |  |  |  |  |
| 87 | 1.4.6 | **Business layer** |  | 22d | 2006-11-01 A | 2006-11-30 A |  | 100% |  |  |  |  |  |  |
| 88 | 1.4.6.1 | Migrate v1 code |  | 22d | 2006-11-01 A | 2006-11-30 A |  | 100% |  |  |  |  |  |  |
| 89 | 1.4.7 | **Prototype code (task 2.5.1)** |  | 22d | 2006-11-01 A | 2006-11-30 A |  | 100% |  |  |  |  |  |  |
| 90 | 1.4.7.1 | Developer Draft |  | 22d | 2006-11-01 A | 2006-11-30 A |  | 100% |  |  |  |  |  |  |
| 91 | 1.4.7.2 | Deliver to BAH | milestone | 0d | 2006-11-30 A | 2006-11-30 A | 90 | 100% |  |  |  |  |  |  |
| 92 | 1.5 | **Testing** |  | 22d | 2006-11-01 A | 2006-11-30 A |  | 100% |  |  |  |  |  |  |
| 93 | 1.5.1 | Implement unit tests |  | 20d | 2006-11-01 A | 2006-11-28 A |  | 100% |  |  |  |  |  |  |
| 94 | 1.5.2 | **Test report (task 2.7.1)** |  | 2d | 2006-11-29 A | 2006-11-30 A |  | 100% |  |  |  |  |  |  |
| 95 | 1.5.2.1 | Developer draft |  | 2d | 2006-11-29 A | 2006-11-30 A | 93 | 100% |  |  |  |  |  |  |
| 96 | 1.5.2.2 | Deliver to BAH | milestone | 0d | 2006-11-30 A | 2006-11-30 A | 95 | 100% |  |  |  |  |  |  |
| 97 | 2 | **Iteration 2** |  | 21d | 2006-12-01 A | 2006-12-29 | 1 |  | 21d | 43d |  |  | 13152h | 88h |
| 98 | 2.1 | **Project Management** |  | 21d | 2006-12-01 A | 2006-12-29 |  |  | 21d | 43d |  | Patrick | 1512h | 88h |
| 99 | 2.1.1 | **Update risk matrix (task 1.4.2)** |  | 11d | 2006-12-01 A | 2006-12-15 |  |  | 11d | 43d | 0d | Patrick | 176h | 88h |
| 100 | 2.1.1.1 | Developer draft |  | 11d | 2006-12-01 | 2006-12-15 |  |  |  | 43d | 0d | Patrick | 88h |  |
| 101 | 2.1.1.2 | Deliver to BAH | milestone | 0d | 2006-12-15 | 2006-12-15 | 100 |  |  | 43d |  | Patrick |  |  |

| ID | WBS | Task | Type | Duration | Start | Finish | Predecessors | Total slack | Free slack | Resources | Work |
| --- | --- | --- | --- | --- | --- | --- | --- | --- | --- | --- | --- |
| 102 | 2.1.2 | **Update risk matrix (task 1.3.2)** |  | 10d | 2006-12-18 | 2006-12-29 |  | 43d |  | Patrick | 160h |
| 103 | 2.1.2.1 | Developer draft |  | 10d | 2006-12-18 | 2006-12-29 | 99 | 43d | 0d | Patrick | 80h |
| 104 | 2.1.2.2 | Deliver to BAH | milestone | 0d | 2006-12-29 | 2006-12-29 | 103 | 43d |  | Patrick |  |
| 105 | 2.1.3 | **Monthly report (task 1.3.2)** |  | 21d | 2006-12-01 | 2006-12-29 |  | 43d |  | Patrick | 336h |
| 106 | 2.1.3.1 | Developer draft |  | 21d | 2006-12-01 | 2006-12-29 |  | 43d | 0d | Patrick | 168h |
| 107 | 2.1.3.2 | Deliver to BAH | milestone | 0d | 2006-12-29 | 2006-12-29 | 106 | 43d |  | Patrick |  |
| 108 | 2.1.4 | **Adoption Collaboration Report (task 1.7)** |  | 21d | 2006-12-01 | 2006-12-29 |  | 43d |  | Patrick | 336h |
| 109 | 2.1.4.1 | Developer Draft |  | 11d | 2006-12-01 | 2006-12-15 |  | 43d | 0d | Patrick | 88h |
| 110 | 2.1.4.2 | Adopter review |  | 5d | 2006-12-18 | 2006-12-22 | 109 | 43d | 0d | Elaborators | 40h |
| 111 | 2.1.4.3 | Developer update |  | 5d | 2006-12-25 | 2006-12-29 | 110 | 43d | 0d | Patrick | 40h |
| 112 | 2.1.4.4 | Deliver to BAH | milestone | 0d | 2006-12-29 | 2006-12-29 | 111 | 43d |  | Patrick |  |
| 113 | 2.1.5 | **Test plan document (task 2.6.2)** |  | 21d | 2006-12-01 | 2006-12-29 |  | 43d |  | Patrick | 336h |
| 114 | 2.1.5.1 | Developer Draft |  | 11d | 2006-12-01 | 2006-12-15 |  | 43d | 0d | Patrick | 88h |
| 115 | 2.1.5.2 | Adopter review |  | 5d | 2006-12-18 | 2006-12-22 | 114 | 43d | 0d | Elaborators | 40h |
| 116 | 2.1.5.3 | Developer update |  | 5d | 2006-12-25 | 2006-12-29 | 115 | 43d | 0d | Patrick | 40h |
| 117 | 2.1.5.4 | Deliver to BAH | milestone | 0d | 2006-12-29 | 2006-12-29 | 116 | 43d |  | Patrick |  |
| 118 | 2.2 | **Requirements** |  | 21d | 2006-12-01 | 2006-12-29 |  | 0d |  |  | 2792h |
| 119 | 2.2.1 | Create level 1 use cases and requirements |  | 2d | 2006-12-01 | 2006-12-04 |  | 0d |  | Ram | 16h |
| 120 | 2.2.2 | **Use case document** |  | 21d | 2006-12-01 | 2006-12-29 |  | 43d |  |  | 2440h |
| 121 | 2.2.2.1 | **Develop C3PR integration use cases (implementation) (task 2.1.2)** |  | 21d | 2006-12-01 | 2006-12-29 |  | 43d |  | Ram; Elaborators | 504h |
| 122 | 2.2.2.1.1 | Developer Draft |  | 11d | 2006-12-01 | 2006-12-15 |  | 43d | 0d | Ram | 88h |
| 123 | 2.2.2.1.2 | Adopter review |  | 5d | 2006-12-18 | 2006-12-22 | 122 | 43d | 0d | Elaborators | 40h |
| 124 | 2.2.2.1.3 | Developer update |  | 5d | 2006-12-25 | 2006-12-29 | 123 | 43d | 0d | Ram | 40h |
| 125 | 2.2.2.1.4 | Deliver to BAH | milestone | 0d | 2006-12-29 | 2006-12-29 | 124 | 43d |  | Patrick |  |

| ID | WBS | Task | Type | Duration | Start | Finish | Predecessors | Total slack | Free slack | Resources | Work |
| --- | --- | --- | --- | --- | --- | --- | --- | --- | --- | --- | --- |
| 126 | 2.2.2.2 | **Develop Study Calendar integration use cases (implementation) (task 2.1.2)** |  | 21d | 2006-12-01 | 2006-12-29 |  | 43d |  | Ram; Elaborators | 504h |
| 127 | 2.2.2.2.1 | Developer Draft |  | 11d | 2006-12-01 | 2006-12-15 |  | 43d | 0d | Ram | 88h |
| 128 | 2.2.2.2.2 | Adopter review |  | 5d | 2006-12-18 | 2006-12-22 | 127 | 43d | 0d | Elaborators | 40h |
| 129 | 2.2.2.2.3 | Developer update |  | 5d | 2006-12-25 | 2006-12-29 | 128 | 43d | 0d | Ram | 40h |
| 130 | 2.2.2.2.4 | Deliver to BAH | milestone | 0d | 2006-12-29 | 2006-12-29 | 129 | 43d |  | Patrick |  |
| 131 | 2.2.2.3 | **Develop participant management use cases (implementation) (task 2.1.2)** |  | 21d | 2006-12-01 | 2006-12-29 |  | 43d |  | Ram; Elaborators | 504h |
| 132 | 2.2.2.3.1 | Developer Draft |  | 11d | 2006-12-01 | 2006-12-15 |  | 43d | 0d | Ram | 88h |
| 133 | 2.2.2.3.2 | Adopter review |  | 5d | 2006-12-18 | 2006-12-22 | 132 | 43d | 0d | Elaborators | 40h |
| 134 | 2.2.2.3.3 | Developer update |  | 5d | 2006-12-25 | 2006-12-29 | 133 | 43d | 0d | Ram | 40h |
| 135 | 2.2.2.3.4 | Deliver to BAH | milestone | 0d | 2006-12-29 | 2006-12-29 | 134 | 43d |  | Patrick |  |
| 136 | 2.2.2.4 | **Refine protocol management use cases (task 2.1.2)** |  | 21d | 2006-12-01 | 2006-12-29 |  | 43d |  | Ram; Priyatam; Elaborators | 928h |
| 137 | 2.2.2.4.1 | Developer Draft |  | 11d | 2006-12-01 | 2006-12-15 |  | 43d | 0d | Ram; Priyatam; Elaborators | 264h |
| 138 | 2.2.2.4.2 | Adopter review |  | 5d | 2006-12-18 | 2006-12-22 | 137 | 43d | 0d | Elaborators | 40h |
| 139 | 2.2.2.4.3 | Developer update |  | 5d | 2006-12-25 | 2006-12-29 | 138 | 43d | 0d | Ram; Priyatam; Elaborators | 120h |
| 140 | 2.2.2.4.4 | Deliver to BAH | milestone | 0d | 2006-12-29 | 2006-12-29 | 139 | 43d |  | Patrick |  |
| 141 | 2.2.3 | **SRS document (task 2.2.2)** |  | 21d | 2006-12-01 | 2006-12-29 |  | 43d |  | Ram | 336h |
| 142 | 2.2.3.1 | Developer Draft |  | 11d | 2006-12-01 | 2006-12-15 |  | 43d | 0d | Ram | 88h |
| 143 | 2.2.3.2 | Adopter review |  | 5d | 2006-12-18 | 2006-12-22 | 142 | 43d | 0d | Elaborators | 40h |
| 144 | 2.2.3.3 | Developer update |  | 5d | 2006-12-25 | 2006-12-29 | 143 | 43d | 0d | Ram | 40h |
| 145 | 2.2.3.4 | Deliver to BAH | milestone | 0d | 2006-12-29 | 2006-12-29 | 144 | 43d |  | Ram |  |
| 146 | 2.3 | **Analysis and Design** |  | 21d | 2006-12-01 | 2006-12-29 |  | 43d |  |  | 2184h |
| 147 | 2.3.1 | **UML diagrams (task 2.3.2)** |  | 21d | 2006-12-01 | 2006-12-29 |  | 43d |  | Development team | 336h |
| 148 | 2.3.1.1 | Developer Draft |  | 11d | 2006-12-01 | 2006-12-15 |  | 43d | 0d | Development team | 88h |
| 149 | 2.3.1.2 | Adopter review |  | 5d | 2006-12-18 | 2006-12-22 | 148 | 43d | 0d | Elaborators | 40h |
| 150 | 2.3.1.3 | Developer update |  | 5d | 2006-12-25 | 2006-12-29 | 149 | 43d | 0d | Development team | 40h |
| 151 | 2.3.1.4 | Deliver to BAH | milestone | 0d | 2006-12-29 | 2006-12-29 | 150 | 43d |  | Patrick |  |

| ID | WBS | Task | Type | Duration | Start | Finish | Predecessors | Total slack | Free slack | Resources | Work |
| --- | --- | --- | --- | --- | --- | --- | --- | --- | --- | --- | --- |
| 152 | 2.3.2 | **Design document (task 2.4.2)** |  | 21d | 2006-12-01 | 2006-12-29 |  | 43d |  | Development team | 336h |
| 153 | 2.3.2.1 | Developer Draft |  | 11d | 2006-12-01 | 2006-12-15 |  | 43d | 0d | Development team | 88h |
| 154 | 2.3.2.2 | Adopter review |  | 5d | 2006-12-18 | 2006-12-22 | 153 | 43d | 0d | Elaborators | 40h |
| 155 | 2.3.2.3 | Developer update |  | 5d | 2006-12-25 | 2006-12-29 | 154 | 43d | 0d | Development team | 40h |
| 156 | 2.3.2.4 | Deliver to BAH | milestone | 0d | 2006-12-29 | 2006-12-29 | 155 | 43d |  | Patrick |  |
| 157 | 2.3.3 | **Doman model** |  | 21d | 2006-12-01 | 2006-12-29 |  | 43d |  | Ram; Priyatam; Ramakrishna | 1512h |
| 158 | 2.3.3.1 | Harmonize participant model with BRIDG |  | 11d | 2006-12-01 | 2006-12-15 |  | 43d | 0d | Ram; Priyatam; Ramakrishna | 264h |
| 159 | 2.3.3.2 | Create participant model |  | 10d | 2006-12-18 | 2006-12-29 | 158 | 43d |  | Ram; Priyatam; Ramakrishna | 240h |
| 160 | 2.3.3.3 | Revise protocol model (including BRIDG harmonization) |  | 21d | 2006-12-01 | 2006-12-29 |  | 43d |  | Ram; Priyatam; Ramakrishna | 504h |
| 161 | 2.4 | **Implementation** |  | 19d | 2006-12-05 | 2006-12-29 | 119 | 0d |  |  | 6056h |
| 162 | 2.4.1 | **Web interface** |  | 19d | 2006-12-05 | 2006-12-29 |  | 43d |  | Priyatam; Kruttik | 992h |
| 163 | 2.4.1.1 | First pass at dynamic interface |  | 5d | 2006-12-05 | 2006-12-11 |  | 43d | 0d | Priyatam; Kruttik | 80h |
| 164 | 2.4.1.2 | Create mockups |  | 5d | 2006-12-12 | 2006-12-18 | 163 | 52d |  | Priyatam; Kruttik | 80h |
| 165 | 2.4.1.3 | Implement protocol management interface |  | 14d | 2006-12-12 | 2006-12-29 | 163 | 43d |  | Priyatam; Kruttik | 224h |
| 166 | 2.4.1.4 | Point login module to Dorian (IdP service) |  | 19d | 2006-12-05 | 2006-12-29 |  | 43d |  | Priyatam; Kruttik | 304h |
| 167 | 2.4.2 | **Enterprise Service Bus** |  | 19d | 2006-12-05 | 2006-12-29 |  | 43d |  | Manav; Kruttik | 1072h |
| 168 | 2.4.2.1 | Implement protocol creation message router |  | 9d | 2006-12-05 | 2006-12-15 |  | 43d | 0d | Manav; Kruttik | 144h |
| 169 | 2.4.2.2 | Implement protocol creation message handler for C3PR |  | 10d | 2006-12-18 | 2006-12-29 | 168 | 43d |  | Manav; Kruttik | 160h |
| 170 | 2.4.2.3 | Implement protocol creation message handler for Study Calendar |  | 10d | 2006-12-18 | 2006-12-29 | 168 | 43d |  | Manav; Kruttik | 160h |
| 171 | 2.4.2.4 | Integrate caGrid security delegation |  | 19d | 2006-12-05 | 2006-12-29 |  | 43d |  | Manav; Kruttik | 304h |
| 172 | 2.4.3 | **Grid service** |  | 19d | 2006-12-05 | 2006-12-29 |  | 43d |  | Manav | 304h |
| 173 | 2.4.3.1 | Implement protocol creation service |  | 19d | 2006-12-05 | 2006-12-29 |  | 43d |  | Manav | 152h |
| 174 | 2.4.4 | **Database** |  | 19d | 2006-12-05 | 2006-12-29 |  | 43d |  | Ram; Priyatam; Ramakrishna | 1368h |
| 175 | 2.4.4.1 | Investigate Identifiers framework |  | 19d | 2006-12-05 | 2006-12-29 |  | 43d |  | Ram; Priyatam; Ramakrishna | 456h |
| 176 | 2.4.4.2 | Update database with protocol changes |  | 19d | 2006-12-05 | 2006-12-29 |  | 43d |  | Ram; Priyatam; Ramakrishna | 456h |

| ID | WBS | Task | Type | Duration | Start | Finish | Predecessors | Total slack | Free slack | Resources | Work |
| --- | --- | --- | --- | --- | --- | --- | --- | --- | --- | --- | --- |
| 177 | 2.4.5 | **Domain model** |  | 19d | 2006-12-05 | 2006-12-29 |  | 43d |  | Priyatam; Ramakrishna | 912h |
| 178 | 2.4.5.1 | Implement protocol model revisions |  | 19d | 2006-12-05 | 2006-12-29 |  | 43d |  | Priyatam; Ramakrishna | 304h |
| 179 | 2.4.5.2 | Implement participant model |  | 19d | 2006-12-05 | 2006-12-29 |  | 43d |  | Priyatam; Ramakrishna | 304h |
| 180 | 2.4.6 | **Security** |  | 19d | 2006-12-05 | 2006-12-29 |  | 0d |  | Manav | 496h |
| 181 | 2.4.6.1 | Deploy Dorian |  | 14d | 2006-12-05 | 2006-12-22 |  | 0d |  | Manav | 112h |
| 182 | 2.4.6.2 | Setup Dorian users |  | 5d | 2006-12-25 | 2006-12-29 | 181 | 0d |  | Manav | 40h |
| 183 | 2.4.6.3 | Setup IdP service |  | 5d | 2006-12-25 | 2006-12-29 | 181 | 0d |  | Manav | 40h |
| 184 | 2.4.6.4 | Investigate secure message/conversation |  | 19d | 2006-12-05 | 2006-12-29 |  | 0d |  | Manav | 152h |
| 185 | 2.4.7 | **Business layer** |  | 19d | 2006-12-05 | 2006-12-29 |  | 43d |  | Priyatam; Kruttik | 608h |
| 186 | 2.4.7.1 | Implement protocol creation service |  | 19d | 2006-12-05 | 2006-12-29 |  | 43d |  | Priyatam; Kruttik | 304h |
| 187 | 2.4.8 | **Prototype code (task 2.5.2)** |  | 19d | 2006-12-05 | 2006-12-29 |  | 43d |  | Patrick | 304h |
| 188 | 2.4.8.1 | Developer draft |  | 19d | 2006-12-05 | 2006-12-29 |  | 43d | 0d | Development team | 152h |
| 189 | 2.4.8.2 | Submit to BAH | milestone | 0d | 2006-12-29 | 2006-12-29 | 188 | 43d |  | Patrick |  |
| 190 | 2.5 | **Testing** |  | 19d | 2006-12-05 | 2006-12-29 | 119 | 43d |  | Developers; Patrick | 608h |
| 191 | 2.5.1 | Create unit tests |  | 17d | 2006-12-05 | 2006-12-27 |  | 43d | 0d | Development team | 136h |
| 192 | 2.5.2 | Create integration tests |  | 17d | 2006-12-05 | 2006-12-27 |  | 43d | 0d | Development team | 136h |
| 193 | 2.5.3 | **Test report (task 2.7.2)** |  | 2d | 2006-12-28 | 2006-12-29 | 192, 191 | 43d |  | Patrick | 32h |
| 194 | 2.5.3.1 | Developer draft |  | 2d | 2006-12-28 | 2006-12-29 |  | 43d | 0d | Development team | 16h |
| 195 | 2.5.3.2 | Submit to BAH | milestone | 0d | 2006-12-29 | 2006-12-29 | 194 | 43d |  | Patrick |  |
| 196 | 3 | **Iteration 3** |  | 23d | 2007-01-01 | 2007-01-31 | 180 | 0d |  |  | 16896h |
| 197 | 3.1 | **Project Management** |  | 23d | 2007-01-01 | 2007-01-31 |  | 0d |  | Patrick | 1656h |
| 198 | 3.1.1 | **Update risk matrix (task 1.4.3)** |  | 13d | 2007-01-01 | 2007-01-17 |  | 0d |  | Patrick | 208h |
| 199 | 3.1.1.1 | Developer draft |  | 13d | 2007-01-01 | 2007-01-17 |  | 0d |  | Patrick | 104h |
| 200 | 3.1.1.2 | Deliver to BAH | milestone | 0d | 2007-01-17 | 2007-01-17 | 199 | 0d |  | Patrick |  |

| ID | WBS | Task | Type | Duration | Start | Finish | Predecessors | Total slack | Resources | Work |
| --- | --- | --- | --- | --- | --- | --- | --- | --- | --- | --- |
| 201 | 3.1.2 | **Update risk matrix (task 1.3.3)** |  | 10d | 2007-01-18 | 2007-01-31 | 200 | 0d | Patrick | 160h |
| 202 | 3.1.2.1 | Developer draft |  | 10d | 2007-01-18 | 2007-01-31 |  | 0d | Patrick | 80h |
| 203 | 3.1.2.2 | Deliver to BAH | milestone | 0d | 2007-01-31 | 2007-01-31 | 202 | 0d | Patrick |  |
| 204 | 3.1.3 | **Monthly report (task 1.3.3)** |  | 23d | 2007-01-01 | 2007-01-31 |  | 0d | Patrick | 368h |
| 205 | 3.1.3.1 | Developer draft |  | 23d | 2007-01-01 | 2007-01-31 |  | 0d | Patrick | 184h |
| 206 | 3.1.3.2 | Deliver to BAH | milestone | 0d | 2007-01-31 | 2007-01-31 | 205 | 0d | Patrick |  |
| 207 | 3.1.4 | **Adoption Collaboration Report (task 1.7)** |  | 23d | 2007-01-01 | 2007-01-31 |  | 0d | Patrick | 368h |
| 208 | 3.1.4.1 | Developer draft |  | 13d | 2007-01-01 | 2007-01-17 |  | 0d | Patrick | 104h |
| 209 | 3.1.4.2 | Adopter review |  | 5d | 2007-01-18 | 2007-01-24 | 208 | 0d | Elaborators | 40h |
| 210 | 3.1.4.3 | Developer update |  | 5d | 2007-01-25 | 2007-01-31 | 209 | 0d | Patrick | 40h |
| 211 | 3.1.4.4 | Deliver to BAH | milestone | 0d | 2007-01-31 | 2007-01-31 | 210 | 0d | Patrick |  |
| 212 | 3.1.5 | **Test plan document (task 2.6.3)** |  | 23d | 2007-01-01 | 2007-01-31 |  | 0d | Patrick | 368h |
| 213 | 3.1.5.1 | Developer draft |  | 13d | 2007-01-01 | 2007-01-17 |  | 0d | Patrick | 104h |
| 214 | 3.1.5.2 | Adopter review |  | 5d | 2007-01-18 | 2007-01-24 | 213 | 0d | Elaborators | 40h |
| 215 | 3.1.5.3 | Developer update |  | 5d | 2007-01-25 | 2007-01-31 | 214 | 0d | Patrick | 40h |
| 216 | 3.1.5.4 | Deliver to BAH | milestone | 0d | 2007-01-31 | 2007-01-31 | 215 | 0d | Patrick |  |
| 217 | 3.2 | **Requirements** |  | 23d | 2007-01-01 | 2007-01-31 |  | 0d |  | 3696h |
| 218 | 3.2.1 | Create level 1 use cases and requirements |  | 2d | 2007-01-01 | 2007-01-02 |  | 0d | Ram | 16h |
| 219 | 3.2.2 | **Use case document** |  | 23d | 2007-01-01 | 2007-01-31 |  | 0d | Ram; Elaborators; Priyatam | 3312h |
| 220 | 3.2.2.1 | **Develop registration use cases** |  | 23d | 2007-01-01 | 2007-01-31 |  | 0d | Ram; Elaborators | 552h |
| 221 | 3.2.2.1.1 | Developer draft |  | 13d | 2007-01-01 | 2007-01-17 |  | 0d | Ram | 104h |
| 222 | 3.2.2.1.2 | Adopter review |  | 5d | 2007-01-18 | 2007-01-24 | 221 | 0d | Elaborators | 40h |
| 223 | 3.2.2.1.3 | Developer update |  | 5d | 2007-01-25 | 2007-01-31 | 222 | 0d | Ram | 40h |
| 224 | 3.2.2.1.4 | Deliver to BAH | milestone | 0d | 2007-01-31 | 2007-01-31 | 223 | 0d | Patrick |  |

| ID | WBS | Task | Type | Duration | Start | Finish | Predecessors | Total slack | Resources | Work |
| --- | --- | --- | --- | --- | --- | --- | --- | --- | --- | --- |
| 225 | 3.2.2.2 | **Refine participant management use cases** |  | 23d | 2007-01-01 | 2007-01-31 |  | 0d | Ram; Elaborators; Priyatam | 736h |
| 226 | 3.2.2.2.1 | Developer draft |  | 13d | 2007-01-01 | 2007-01-17 |  | 0d | Ram | 104h |
| 227 | 3.2.2.2.2 | Adopter review |  | 5d | 2007-01-18 | 2007-01-24 | 226 | 0d | Elaborators | 40h |
| 228 | 3.2.2.2.3 | Developer update |  | 5d | 2007-01-25 | 2007-01-31 | 227 | 0d | Ram | 40h |
| 229 | 3.2.2.2.4 | Deliver to BAH | milestone | 0d | 2007-01-31 | 2007-01-31 | 228 | 0d | Patrick |  |
| 230 | 3.2.2.3 | **Refine C3PR integration use cases** |  | 23d | 2007-01-01 | 2007-01-31 |  | 0d | Ram; Elaborators; Priyatam | 736h |
| 231 | 3.2.2.3.1 | Developer draft |  | 13d | 2007-01-01 | 2007-01-17 |  | 0d | Ram | 104h |
| 232 | 3.2.2.3.2 | Adopter review |  | 5d | 2007-01-18 | 2007-01-24 | 231 | 0d | Elaborators | 40h |
| 233 | 3.2.2.3.3 | Developer update |  | 5d | 2007-01-25 | 2007-01-31 | 232 | 0d | Ram | 40h |
| 234 | 3.2.2.3.4 | Deliver to BAH | milestone | 0d | 2007-01-31 | 2007-01-31 | 233 | 0d | Patrick |  |
| 235 | 3.2.2.4 | **Refine PSC use cases** |  | 23d | 2007-01-01 | 2007-01-31 |  | 0d | Ram; Elaborators; Priyatam | 736h |
| 236 | 3.2.2.4.1 | Developer draft |  | 13d | 2007-01-01 | 2007-01-17 |  | 0d | Ram | 104h |
| 237 | 3.2.2.4.2 | Adopter review |  | 5d | 2007-01-18 | 2007-01-24 | 236 | 0d | Elaborators | 40h |
| 238 | 3.2.2.4.3 | Developer update |  | 5d | 2007-01-25 | 2007-01-31 | 237 | 0d | Ram | 40h |
| 239 | 3.2.2.4.4 | Deliver to BAH | milestone | 0d | 2007-01-31 | 2007-01-31 | 238 | 0d | Patrick |  |
| 240 | 3.2.3 | **SRS document** |  | 23d | 2007-01-01 | 2007-01-31 |  | 0d | Ram | 368h |
| 241 | 3.2.3.1 | Developer draft |  | 13d | 2007-01-01 | 2007-01-17 |  | 0d | Ram | 104h |
| 242 | 3.2.3.2 | Adopter review |  | 5d | 2007-01-18 | 2007-01-24 | 241 | 0d | Elaborators | 40h |
| 243 | 3.2.3.3 | Developer update |  | 5d | 2007-01-25 | 2007-01-31 | 242 | 0d | Ram | 40h |
| 244 | 3.2.3.4 | Deliver to BAH | milestone | 0d | 2007-01-31 | 2007-01-31 | 243 | 0d | Patrick |  |
| 245 | 3.3 | **Analysis and Design** |  | 23d | 2007-01-01 | 2007-01-31 |  | 0d |  | 3312h |
| 246 | 3.3.1 | **UML diagrams (task 2.3.2)** |  | 23d | 2007-01-01 | 2007-01-31 |  | 0d | Development team | 368h |
| 247 | 3.3.1.1 | Developer draft |  | 13d | 2007-01-01 | 2007-01-17 |  | 0d | Development team | 104h |
| 248 | 3.3.1.2 | Adopter review |  | 5d | 2007-01-18 | 2007-01-24 | 247 | 0d | Elaborators | 40h |
| 249 | 3.3.1.3 | Developer update |  | 5d | 2007-01-25 | 2007-01-31 | 248 | 0d | Development team | 40h |
| 250 | 3.3.1.4 | Deliver to BAH | milestone | 0d | 2007-01-31 | 2007-01-31 | 249 | 0d | Patrick |  |

| ID | WBS | Task | Type | Duration | Start | Finish | Predecessors | Total slack | Resources | Work |
| --- | --- | --- | --- | --- | --- | --- | --- | --- | --- | --- |
| 251 | 3.3.2 | **Design document (task 2.4.2)** |  | 23d | 2007-01-01 | 2007-01-31 |  | 0d | Development team | 368h |
| 252 | 3.3.2.1 | Developer draft |  | 13d | 2007-01-01 | 2007-01-17 |  | 0d | Development team | 104h |
| 253 | 3.3.2.2 | Adopter review |  | 5d | 2007-01-18 | 2007-01-24 | 252 | 0d | Elaborators | 40h |
| 254 | 3.3.2.3 | Developer update |  | 5d | 2007-01-25 | 2007-01-31 | 253 | 0d | Development team | 40h |
| 255 | 3.3.2.4 | Deliver to BAH | milestone | 0d | 2007-01-31 | 2007-01-31 | 254 | 0d | Patrick |  |
| 256 | 3.3.3 | **Draft architecture guide (task 2.8.1)** |  | 23d | 2007-01-01 | 2007-01-31 |  | 0d | Development team | 368h |
| 257 | 3.3.3.1 | Developer draft |  | 13d | 2007-01-01 | 2007-01-17 |  | 0d | Development team | 104h |
| 258 | 3.3.3.2 | Adopter review |  | 5d | 2007-01-18 | 2007-01-24 | 257 | 0d | Elaborators | 40h |
| 259 | 3.3.3.3 | Developer update |  | 5d | 2007-01-25 | 2007-01-31 | 258 | 0d | Development team | 40h |
| 260 | 3.3.3.4 | Deliver to BAH | milestone | 0d | 2007-01-31 | 2007-01-31 | 259 | 0d | Patrick |  |
| 261 | 3.3.4 | **Doman model** |  | 23d | 2007-01-01 | 2007-01-31 |  | 0d | Ram; Priyatam; Ramakrishna | 2208h |
| 262 | 3.3.4.1 | Harmonize C3PR model with BRIDG |  | 10d | 2007-01-01 | 2007-01-12 |  | 0d | Ram; Priyatam; Ramakrishna | 240h |
| 263 | 3.3.4.2 | Create registration model |  | 13d | 2007-01-15 | 2007-01-31 | 262 | 0d | Ram; Priyatam; Ramakrishna | 312h |
| 264 | 3.3.4.3 | Revise protocol model (including BRIDG harmonization) |  | 23d | 2007-01-01 | 2007-01-31 |  | 0d | Ram; Priyatam; Ramakrishna | 552h |
| 265 | 3.3.4.4 | Revise participant model (including BRIDG harmonization) |  | 23d | 2007-01-01 | 2007-01-31 |  | 0d | Ram; Priyatam; Ramakrishna | 552h |
| 266 | 3.4 | **Implementation** |  | 21d | 2007-01-03 | 2007-01-31 | 218 | 0d |  | 7728h |
| 267 | 3.4.1 | **Web interface** |  | 21d | 2007-01-03 | 2007-01-31 |  | 0d | Priyatam; Kruttik | 1008h |
| 268 | 3.4.1.1 | Finalize protocol management interface |  | 21d | 2007-01-03 | 2007-01-31 |  | 0d | Priyatam; Kruttik | 336h |
| 269 | 3.4.1.2 | Implement participant management interface |  | 21d | 2007-01-03 | 2007-01-31 |  | 0d | Priyatam; Kruttik | 336h |
| 270 | 3.4.2 | **Enterprise Service Bus** |  | 21d | 2007-01-03 | 2007-01-31 |  | 0d | Manav; Kruttik | 1008h |
| 271 | 3.4.2.1 | Implement participant creation message router |  | 8d | 2007-01-03 | 2007-01-12 |  | 0d | Manav; Kruttik | 128h |
| 272 | 3.4.2.2 | Implement participant creation message handler for C3PR |  | 7d | 2007-01-15 | 2007-01-23 | 271 | 0d | Manav; Kruttik | 112h |
| 273 | 3.4.2.3 | Implement participant creation message handler for Study Calendar |  | 6d | 2007-01-24 | 2007-01-31 | 272 | 0d | Manav; Kruttik | 96h |
| 274 | 3.4.2.4 | Implement registration change message router |  | 8d | 2007-01-03 | 2007-01-12 |  | 0d | Manav; Kruttik | 128h |
| 275 | 3.4.2.5 | Implement registration change message handler for C3PR |  | 7d | 2007-01-15 | 2007-01-23 | 274 | 0d | Manav; Kruttik | 112h |
| 276 | 3.4.2.6 | Implement registration change message handler for Study Calendar |  | 6d | 2007-01-24 | 2007-01-31 | 275 | 0d | Manav; Kruttik | 96h |

| ID | WBS | Task | Type | Duration | Start | Finish | Predecessors | Total slack | Resources | Work |
| --- | --- | --- | --- | --- | --- | --- | --- | --- | --- | --- |
| 277 | 3.4.3 | **Grid service** |  | 21d | 2007-01-03 | 2007-01-31 |  | 0d | Manav | 504h |
| 278 | 3.4.3.1 | Implement participant creation service |  | 21d | 2007-01-03 | 2007-01-31 |  | 0d | Manav | 168h |
| 279 | 3.4.3.2 | Implement registration change service |  | 21d | 2007-01-03 | 2007-01-31 |  | 0d | Manav | 168h |
| 280 | 3.4.4 | **Database** |  | 21d | 2007-01-03 | 2007-01-31 |  | 0d | Ram; Priyatam; Ramakrishna | 2016h |
| 281 | 3.4.4.1 | Update database with protocol model changes |  | 21d | 2007-01-03 | 2007-01-31 |  | 0d | Ram; Priyatam; Ramakrishna | 504h |
| 282 | 3.4.4.2 | Update database with participant model changes |  | 21d | 2007-01-03 | 2007-01-31 |  | 0d | Ram; Priyatam; Ramakrishna | 504h |
| 283 | 3.4.4.3 | Implement database with registration model |  | 21d | 2007-01-03 | 2007-01-31 |  | 0d | Ram; Priyatam; Ramakrishna | 504h |
| 284 | 3.4.5 | **Domain model** |  | 21d | 2007-01-03 | 2007-01-31 |  | 0d | Priyatam; Ramakrishna | 1344h |
| 285 | 3.4.5.1 | Implement protocol model revisions |  | 21d | 2007-01-03 | 2007-01-31 |  | 0d | Priyatam; Ramakrishna | 336h |
| 286 | 3.4.5.2 | Implement participant model |  | 21d | 2007-01-03 | 2007-01-31 |  | 0d | Priyatam; Ramakrishna | 336h |
| 287 | 3.4.5.3 | Implement registration model |  | 21d | 2007-01-03 | 2007-01-31 |  | 0d | Priyatam; Ramakrishna | 336h |
| 288 | 3.4.6 | **Security** |  | 21d | 2007-01-03 | 2007-01-31 |  | 0d | Manav | 504h |
| 289 | 3.4.6.1 | Implement CSM authorization in grid service |  | 21d | 2007-01-03 | 2007-01-31 |  | 0d | Manav | 168h |
| 290 | 3.4.6.2 | Implement grid grouper |  | 21d | 2007-01-03 | 2007-01-31 |  | 0d | Manav | 168h |
| 291 | 3.4.7 | **Business layer** |  | 21d | 2007-01-03 | 2007-01-31 |  | 0d | Priyatam; Kruttik | 1008h |
| 292 | 3.4.7.1 | Implement participant creation service |  | 21d | 2007-01-03 | 2007-01-31 |  | 0d | Priyatam; Kruttik | 336h |
| 293 | 3.4.7.2 | Implement registration change service |  | 21d | 2007-01-03 | 2007-01-31 |  | 0d | Priyatam; Kruttik | 336h |
| 294 | 3.4.8 | **Prototype code (task 2.5.3)** |  | 21d | 2007-01-03 | 2007-01-31 |  | 0d | Patrick | 336h |
| 295 | 3.4.8.1 | Developer draft |  | 21d | 2007-01-03 | 2007-01-31 |  | 0d | Development team | 168h |
| 296 | 3.4.8.2 | Submit to BAH | milestone | 0d | 2007-01-31 | 2007-01-31 | 295 | 0d | Patrick |  |
| 297 | 3.5 | **Testing** |  | 21d | 2007-01-03 | 2007-01-31 | 218 | 0d |  | 504h |
| 298 | 3.5.1 | Create unit tests |  | 19d | 2007-01-03 | 2007-01-29 |  | 0d | Development team | 152h |
| 299 | 3.5.2 | Implement integration test framework |  | 19d | 2007-01-03 | 2007-01-29 |  | 0d | Patrick | 152h |
| 300 | 3.5.3 | **Test report (task 2.7.3)** |  | 2d | 2007-01-30 | 2007-01-31 | 299, 298 | 0d | Development team | 32h |
| 301 | 3.5.3.1 | Developer draft |  | 2d | 2007-01-30 | 2007-01-31 |  | 0d | Development team | 16h |
| 302 | 3.5.3.2 | Deliver to BAH | milestone | 0d | 2007-01-31 | 2007-01-31 | 301 | 0d | Patrick |  |
| 303 | 3.5.4 | Create functional test cases |  | 21d | 2007-01-03 | 2007-01-31 |  | 0d | Elaborators | 168h |

| ID | WBS | Task | Duration | Start | Finish | Predecessors | Total slack |
| --- | --- | --- | --- | --- | --- | --- | --- |
| 304 | 4 | **Iteration 4** | 20d | 2007-02-01 | 2007-02-28 | 196 | 0d |
| 305 | 4.1 | **Project Management** | 20d | 2007-02-01 | 2007-02-28 |  | 0d |
| 306 | 4.1.1 | Update risk matrix | 11d | 2007-02-01 | 2007-02-15 |  | 9d |
| 307 | 4.1.2 | Update risk matrix | 20d | 2007-02-01 | 2007-02-28 |  | 0d |
| 308 | 4.1.3 | Monthly report | 20d | 2007-02-01 | 2007-02-28 |  | 0d |
| 309 | 4.1.4 | Construction and transition phase plan | 20d | 2007-02-01 | 2007-02-28 |  | 0d |
| 310 | 4.1.5 | Adoption Collaboration Report | 20d | 2007-02-01 | 2007-02-28 |  | 0d |
| 311 | 4.1.6 | Test plan document | 20d | 2007-02-01 | 2007-02-28 |  | 0d |
| 312 | 4.2 | **Requirements** | 20d | 2007-02-01 | 2007-02-28 |  | 0d |
| 313 | 4.2.1 | Use case document | 20d | 2007-02-01 | 2007-02-28 |  | 0d |
| 314 | 4.2.2 | SRS document | 20d | 2007-02-01 | 2007-02-28 |  | 0d |
| 315 | 4.3 | **Analysis and Design** | 20d | 2007-02-01 | 2007-02-28 |  | 0d |
| 316 | 4.3.1 | UML diagrams | 20d | 2007-02-01 | 2007-02-28 |  | 0d |
| 317 | 4.3.2 | Design document | 20d | 2007-02-01 | 2007-02-28 |  | 0d |
| 318 | 4.3.3 | Final architecture guide | 20d | 2007-02-01 | 2007-02-28 |  | 0d |
| 319 | 4.3.4 | Lessons learned | 20d | 2007-02-01 | 2007-02-28 |  | 0d |
| 320 | 4.4 | **Implementation** | 20d | 2007-02-01 | 2007-02-28 |  | 0d |
| 321 | 4.4.1 | Prototype code | 20d | 2007-02-01 | 2007-02-28 |  | 0d |
| 322 | 4.5 | **Testing** | 20d | 2007-02-01 | 2007-02-28 |  | 0d |
| 323 | 4.5.1 | Create unit tests | 20d | 2007-02-01 | 2007-02-28 |  | 0d |
| 324 | 4.5.2 | Add integration tests | 20d | 2007-02-01 | 2007-02-28 |  | 0d |
| 325 | 4.5.3 | Test report | 20d | 2007-02-01 | 2007-02-28 |  | 0d |
